# GFA26SE111 PickleVerse

How a schedule from MS Project XML changed from version to version. A marks actual dates.

## Version 1 (saved 2026-11-09)

Note of the change: doc

| ID | WBS | Task | Duration | Predecessors |
| --- | --- | --- | --- | --- |
| 1 |  | Calendar start - Chưa xác nhận | 0d |  |
| 2 | 2 | **Proposal work packages** |  |  |
| 3 |  | P01 Project foundation (Weeks 1-2) | 10d | 1 |
| 4 |  | P02 Tutorial and training (Weeks 3-4) | 10d | 3 |
| 5 |  | P03 Online singles (Weeks 5-7) | 15d | 4 |
| 6 |  | P04 Bot, rating and shot data (Weeks 8-9) | 10d | 5 |
| 7 |  | P05 Coaching and doubles (Weeks 10-11) | 10d | 6 |
| 8 |  | P06 Admin and integration (Weeks 12-13) | 10d | 7 |
| 9 |  | P07 Release and guides (Weeks 14-14) | 5d | 8 |
| 10 | 3 | **Course target weeks** |  |  |
| 11 |  | M01 Project introduction (end of Week 1) | 0d | 1FS+5d |
| 12 |  | M02 Project plan (end of Week 2) | 0d | 1FS+10d |
| 13 |  | M03 Overall requirements (end of Week 3) | 0d | 1FS+15d |
| 14 |  | M04 Overall software design (end of Week 5) | 0d | 1FS+25d |
| 15 |  | M05 Software Package 1 (end of Week 7) | 0d | 1FS+35d |
| 16 |  | M06 Software Package 2 (end of Week 9) | 0d | 1FS+45d |
| 17 |  | M07 Software Package 3 (end of Week 11) | 0d | 1FS+55d |
| 18 |  | M08 Full software package (end of Week 13) | 0d | 1FS+65d |
| 19 |  | M09 Software user guides (end of Week 14) | 0d | 1FS+70d |
| 20 |  | M10 Final package and defense (end of Week 15) | 0d | 1FS+75d |
| 21 | 4 | **Parallel checks and package readiness** |  |  |
| 22 |  | A01 Write project introduction | 4d | 1 |
| 23 |  | R01 Ready for Project introduction | 0d | 22 |
| 24 |  | A02 Write plan and first risks | 5d | 1FS+4d |
| 25 |  | R02 Ready for Project plan | 0d | 24, 23 |
| 26 |  | A03 Review SRS and set tracking | 5d | 1FS+9d |
| 27 |  | R03 Ready for Overall requirements | 0d | 26, 25 |
| 28 |  | A04 Check design, test plan and first demo | 8d | 1FS+15d |
| 29 |  | R04 Ready for Overall software design | 0d | 28, 27 |
| 30 |  | A05 Check first build and update reports | 5d | 1FS+30d, 5FF |
| 31 |  | R05 Ready for Software Package 1 | 0d | 30, 5, 29 |
| 32 |  | A06 Check second build and update reports | 5d | 1FS+40d, 6FF |
| 33 |  | R06 Ready for Software Package 2 | 0d | 32, 6, 31 |
| 34 |  | A07 Check third build and update reports | 5d | 1FS+50d, 7FF |
| 35 |  | R07 Ready for Software Package 3 | 0d | 34, 7, 33 |
| 36 |  | A08 Run final integration and system checks | 5d | 1FS+60d, 8FF |
| 37 |  | R08 Ready for Full software package | 0d | 36, 8, 35 |
| 38 |  | A09 Prepare user and admin guides | 5d | 1FS+65d, 9FF |
| 39 |  | R09 Ready for Software user guides | 0d | 38, 9, 37 |
| 40 |  | A10 Prepare final reports and defense | 5d | 1FS+70d, 9FF |
| 41 |  | R10 Ready for Final package and defense | 0d | 40, 9, 39 |

## Version 2 (data date 2026-11-11, saved 2026-11-11)

Note of the change: docs(reports): rewrite Reports 1-5 to v1.0 after internal review

Last finish none → 2026-12-20. Complete tasks 0 → 51.

Added:

| ID | Task | Duration | Start | Finish | Predecessors | Constraint | Resources |
| --- | --- | --- | --- | --- | --- | --- | --- |
| 42 | 8.3 Hybrid analysis worker, analysis jobs and coaching panel | 10d | 2026-11-02 | 2026-11-13 |  | start no earlier than 2026-11-02 | Nguyễn Gia Huy |
| 43 | **9 FE-06 Progress, rewards and shop** | 10d | 2026-10-05 | 2026-10-16 |  |  |  |
| 44 | 9.1 XP, levels, technique mastery and progress dashboard | 10d | 2026-10-05 | 2026-10-16 |  | start no earlier than 2026-10-05 | Nguyễn Gia Huy |
| 45 | 9.2 Daily and weekly missions, achievements, streak rewards | 10d | 2026-10-05 | 2026-10-16 |  | start no earlier than 2026-10-05 | Nguyễn Văn Thành Đạt |
| 46 | 9.3 Currencies, shop and collection | 10d | 2026-10-05 | 2026-10-16 |  | start no earlier than 2026-10-05 | Nguyễn Gia Huy |
| 47 | **10 FE-07 Social, history and ranking** | 20d | 2026-10-05 | 2026-10-30 |  |  |  |
| 48 | 10.1 Friends, blocking and room invitations | 20d | 2026-10-05 | 2026-10-30 |  | start no earlier than 2026-10-05 | Nguyễn Văn Thành Đạt |
| 49 | 10.2 Match history, replay recording and replay viewer | 20d | 2026-10-05 | 2026-10-30 |  | start no earlier than 2026-10-05 | Nguyễn Văn Thành Đạt |
| 50 | 10.3 Elo leaderboard with cache | 10d | 2026-10-05 | 2026-10-16 |  | start no earlier than 2026-10-05 | Huỳnh Trung Kiên |
| 51 | **11 FE-08 Reports, restrictions and appeals** | 10d | 2026-11-02 | 2026-11-13 |  |  |  |
| 52 | 11.1 Player report after a match | 10d | 2026-11-02 | 2026-11-13 |  | start no earlier than 2026-11-02 | Huỳnh Trung Kiên |
| 53 | 11.2 Restricted access, decision view and appeal | 10d | 2026-11-02 | 2026-11-13 |  | start no earlier than 2026-11-02 | Huỳnh Trung Kiên |
| 54 | **12 FE-09 Administration web application** | 20d | 2026-10-19 | 2026-11-13 |  |  |  |
| 55 | 12.1 Admin authentication, layout and protected routing | 10d | 2026-10-19 | 2026-10-30 |  | start no earlier than 2026-10-19 | Huỳnh Trung Kiên |
| 56 | 12.2 User management, sanctions and progress reset | 10d | 2026-11-02 | 2026-11-13 |  | start no earlier than 2026-11-02 | Huỳnh Trung Kiên |
| 57 | 12.3 Content management: lessons, references, cosmetics, missions | 10d | 2026-11-02 | 2026-11-13 |  | start no earlier than 2026-11-02 | Huỳnh Trung Kiên |
| 58 | 12.4 Live match monitoring and stopping | 10d | 2026-11-02 | 2026-11-13 |  | start no earlier than 2026-11-02 | Nguyễn Văn Thành Đạt |
| 59 | 12.5 Moderation of player reports and appeals | 10d | 2026-11-02 | 2026-11-13 |  | start no earlier than 2026-11-02 | Huỳnh Trung Kiên |
| 60 | 12.6 Analytics dashboard | 10d | 2026-11-02 | 2026-11-13 |  | start no earlier than 2026-11-02 | Huỳnh Trung Kiên |
| 61 | **13 FE-10 Expert review** | 10d | 2026-11-02 | 2026-11-13 |  |  |  |
| 62 | 13.1 Shot labelling and dataset export | 10d | 2026-11-02 | 2026-11-13 |  | start no earlier than 2026-11-02 | Nguyễn Văn Thành Đạt |
| 63 | **14 Art, audio and interface assets** | 40d | 2026-09-21 | 2026-11-13 |  |  |  |
| 64 | 14.1 Characters, 20 animation clips, courts and stadium | 20d | 2026-09-21 | 2026-10-16 |  | start no earlier than 2026-09-21 | Nguyễn Gia Huy |
| 65 | 14.2 Music and sound effects | 10d | 2026-10-05 | 2026-10-16 |  | start no earlier than 2026-10-05 | Huỳnh Trung Kiên |
| 66 | 14.3 Front-end screens, loading artwork and Vietnamese fonts | 20d | 2026-10-19 | 2026-11-13 |  | start no earlier than 2026-10-19 | Trần Nguyễn Hiếu Thuận |
| 67 | **15 Testing and release** | 30d | 2026-11-02 | 2026-12-11 |  |  |  |
| 68 | 15.1 Unit tests (Unity EditMode, Python) and coverage | 20d | 2026-11-02 | 2026-11-27 |  | start no earlier than 2026-11-02 | Trần Nguyễn Hiếu Thuận |
| 69 | 15.2 Integration and system testing on staging | 20d | 2026-11-16 | 2026-12-11 |  | start no earlier than 2026-11-16 | Trần Nguyễn Hiếu Thuận |
| 70 | 15.3 Acceptance tests, playtests and defect fixing | 20d | 2026-11-16 | 2026-12-11 |  | start no earlier than 2026-11-16 | Huỳnh Trung Kiên; Nguyễn Văn Thành Đạt; Nguyễn Gia Huy; Trần Nguyễn Hiếu Thuận |
| 71 | 15.4 Staging deployment and release package | 30d | 2026-11-02 | 2026-12-11 |  | start no earlier than 2026-11-02 | Nguyễn Văn Thành Đạt |
| 72 | **Milestones** | 70d | 2026-09-13 | 2026-12-20 |  |  |  |
| 73 | M01 Report 1 – Project Introduction | 0d | 2026-09-13 | 2026-09-13 | 3 | start no earlier than 2026-09-13 |  |
| 74 | M02 Report 2 – Project Management Plan | 0d | 2026-09-20 | 2026-09-20 | 3 | start no earlier than 2026-09-20 |  |
| 75 | M03 Report 3 – SRS | 0d | 2026-09-27 | 2026-09-27 | 4 | start no earlier than 2026-09-27 |  |
| 76 | M04 Report 4 – SDD and test plan | 0d | 2026-10-11 | 2026-10-11 | 5 | start no earlier than 2026-10-11 |  |
| 77 | M05 Software Package 1 (Review 2) | 0d | 2026-10-25 | 2026-10-25 | 15, 26, 64 | start no earlier than 2026-10-25 |  |
| 78 | M06 Software Package 2 | 0d | 2026-11-08 | 2026-11-08 | 11, 60, 42 | start no earlier than 2026-11-08 |  |
| 79 | M07 Software Package 3 (Review 3) | 0d | 2026-11-22 | 2026-11-22 | 36, 69 | start no earlier than 2026-11-22 |  |
| 80 | M08 Full software package | 0d | 2026-12-06 | 2026-12-06 | 69 | start no earlier than 2026-12-06 |  |
| 81 | M09 Report 6 – User Guides | 0d | 2026-12-13 | 2026-12-13 | 6 | start no earlier than 2026-12-13 |  |
| 82 | M10 Report 7 and final defense | 0d | 2026-12-20 | 2026-12-20 | 70, 71 | start no earlier than 2026-12-20 |  |

Changed:

| ID | Task | Start | Finish | Duration | Complete | Predecessors | Other |
| --- | --- | --- | --- | --- | --- | --- | --- |
| 1 | **1 Project management and documentation** | none → 2026-09-07 | none → 2026-12-11 | 0d → 70d | 0% → 81% |  | was named Calendar start - Chưa xác nhận |
| 2 | 1.1 Planning, scheduling and weekly tracking | none → 2026-09-07 | none → 2026-12-11 | none → 70d | 0% → 60% |  | was named Proposal work packages; constraint none → start no earlier than 2026-09-07; resources none → Huỳnh Trung Kiên |
| 3 | 1.2 Report 1 and Report 2 | none → 2026-11-02 | none → 2026-11-13 |  | 0% → 100% | 1 → none | was named P01 Project foundation (Weeks 1-2); constraint none → start no earlier than 2026-11-02; resources none → Nguyễn Gia Huy; Huỳnh Trung Kiên |
| 4 | 1.3 Report 3 – Software Requirement Specification | none → 2026-11-02 | none → 2026-11-13 |  | 0% → 100% | 3 → none | was named P02 Tutorial and training (Weeks 3-4); constraint none → start no earlier than 2026-11-02; resources none → Nguyễn Gia Huy |
| 5 | 1.4 Report 4 – Software Design Document | none → 2026-11-02 | none → 2026-11-13 | 15d → 10d | 0% → 100% | 4 → none | was named P03 Online singles (Weeks 5-7); constraint none → start no earlier than 2026-11-02; resources none → Nguyễn Văn Thành Đạt |
| 6 | 1.5 Reports 5–7, user guides and defense slides | none → 2026-11-02 | none → 2026-12-11 | 10d → 30d | 0% → 35% | 5 → none | was named P04 Bot, rating and shot data (Weeks 8-9); constraint none → start no earlier than 2026-11-02; resources none → Trần Nguyễn Hiếu Thuận; Huỳnh Trung Kiên |
| 7 | **2 Foundation and architecture** | none → 2026-09-07 | none → 2026-11-13 | 10d → 50d | 0% → 100% | 6 → none | was named P05 Coaching and doubles (Weeks 10-11) |
| 8 | 2.1 Unity project, scenes and assembly structure | none → 2026-09-07 | none → 2026-10-02 | 10d → 20d | 0% → 100% | 7 → none | was named P06 Admin and integration (Weeks 12-13); constraint none → start no earlier than 2026-09-07; resources none → Nguyễn Gia Huy |
| 9 | 2.2 Layered Web API, EF Core model and database schema (51 tables) | none → 2026-10-19 | none → 2026-10-30 | 5d → 10d | 0% → 100% | 8 → none | was named P07 Release and guides (Weeks 14-14); constraint none → start no earlier than 2026-10-19; resources none → Nguyễn Văn Thành Đạt |
| 10 | 2.3 Docker Compose environment with PostgreSQL, Redis and S3 storage | none → 2026-11-02 | none → 2026-11-13 | none → 10d | 0% → 100% |  | was named Course target weeks; constraint none → start no earlier than 2026-11-02; resources none → Nguyễn Văn Thành Đạt |
| 11 | 2.4 CI/CD pipeline (GitHub Actions, Docker Hub, SSH deployment) | none → 2026-11-02 | none → 2026-11-13 | 0d → 10d | 0% → 100% | 1FS+5d → none | was named M01 Project introduction (end of Week 1); constraint none → start no earlier than 2026-11-02; resources none → Nguyễn Văn Thành Đạt |
| 12 | **3 Gameplay core** | none → 2026-10-05 | none → 2026-10-30 | 0d → 20d | 0% → 100% | 1FS+10d → none | was named M02 Project plan (end of Week 2) |
| 13 | 3.1 Ball flight and bounce simulation at 120 Hz | none → 2026-10-05 | none → 2026-10-16 | 0d → 10d | 0% → 100% | 1FS+15d → none | was named M03 Overall requirements (end of Week 3); constraint none → start no earlier than 2026-10-05; resources none → Nguyễn Gia Huy |
| 14 | 3.2 Paddle contact, shot input and seven shot kinds | none → 2026-10-05 | none → 2026-10-16 | 0d → 10d | 0% → 100% | 1FS+25d → none | was named M04 Overall software design (end of Week 5); constraint none → start no earlier than 2026-10-05; resources none → Nguyễn Gia Huy |
| 15 | 3.3 Singles rules engine (scoring, serve, faults, non-volley zone) | none → 2026-10-05 | none → 2026-10-16 | 0d → 10d | 0% → 100% | 1FS+35d → none | was named M05 Software Package 1 (end of Week 7); constraint none → start no earlier than 2026-10-05; resources none → Nguyễn Gia Huy |
| 16 | 3.4 Character movement and animation controller | none → 2026-10-05 | none → 2026-10-16 | 0d → 10d | 0% → 100% | 1FS+45d → none | was named M06 Software Package 2 (end of Week 9); constraint none → start no earlier than 2026-10-05; resources none → Nguyễn Gia Huy |
| 17 | 3.5 Match flow, HUD, intro cinematic and result screen | none → 2026-10-05 | none → 2026-10-30 | 0d → 20d | 0% → 100% | 1FS+55d → none | was named M07 Software Package 3 (end of Week 11); constraint none → start no earlier than 2026-10-05; resources none → Trần Nguyễn Hiếu Thuận |
| 18 | **4 FE-01 Account and onboarding** | none → 2026-10-19 | none → 2026-11-13 | 0d → 20d | 0% → 98% | 1FS+65d → none | was named M08 Full software package (end of Week 13) |
| 19 | 4.1 Registration and OTP email verification | none → 2026-10-19 | none → 2026-10-30 | 0d → 10d | 0% → 100% | 1FS+70d → none | was named M09 Software user guides (end of Week 14); constraint none → start no earlier than 2026-10-19; resources none → Nguyễn Văn Thành Đạt |
| 20 | 4.2 Sign in, sign out, JWT access and refresh tokens | none → 2026-10-19 | none → 2026-11-13 | 0d → 20d | 0% → 100% | 1FS+75d → none | was named M10 Final package and defense (end of Week 15); constraint none → start no earlier than 2026-10-19; resources none → Nguyễn Văn Thành Đạt |
| 21 | 4.3 Password recovery | none → 2026-11-02 | none → 2026-11-13 | none → 10d | 0% → 100% |  | was named Parallel checks and package readiness; constraint none → start no earlier than 2026-11-02; resources none → Trần Nguyễn Hiếu Thuận |
| 22 | 4.4 Profile, character and onboarding level | none → 2026-10-19 | none → 2026-10-30 | 4d → 10d | 0% → 80% | 1 → none | was named A01 Write project introduction; constraint none → start no earlier than 2026-10-19; resources none → Trần Nguyễn Hiếu Thuận |
| 23 | 4.5 Settings: audio, graphics, key binding, touch layout | none → 2026-10-19 | none → 2026-10-30 | 0d → 10d | 0% → 100% | 22 → none | was named R01 Ready for Project introduction; constraint none → start no earlier than 2026-10-19; resources none → Trần Nguyễn Hiếu Thuận |
| 24 | **5 FE-02 Tutorial and technique training** | none → 2026-10-05 | none → 2026-11-27 | 5d → 40d | 0% → 92% | 1FS+4d → none | was named A02 Write plan and first risks |
| 25 | 5.1 Interactive tutorial (17 steps) | none → 2026-10-05 | none → 2026-10-16 | 0d → 10d | 0% → 100% | 24, 23 → none | was named R02 Ready for Project plan; constraint none → start no earlier than 2026-10-05; resources none → Nguyễn Gia Huy |
| 26 | 5.2 Lesson and drill framework with star scoring | none → 2026-10-05 | none → 2026-11-13 | 5d → 30d | 0% → 100% | 1FS+9d → none | was named A03 Review SRS and set tracking; constraint none → start no earlier than 2026-10-05; resources none → Nguyễn Gia Huy |
| 27 | 5.3 Content of 15 lessons and 12 techniques | none → 2026-11-02 | none → 2026-11-13 | 0d → 10d | 0% → 100% | 26, 25 → none | was named R03 Ready for Overall requirements; constraint none → start no earlier than 2026-11-02; resources none → Nguyễn Gia Huy |
| 28 | 5.4 Offline training and one-time synchronisation | none → 2026-11-02 | none → 2026-11-27 | 8d → 20d | 0% → 70% | 1FS+15d → none | was named A04 Check design, test plan and first demo; constraint none → start no earlier than 2026-11-02; resources none → Nguyễn Văn Thành Đạt |
| 29 | **6 FE-03 Bot practice** | none → 2026-10-05 | none → 2026-10-30 | 0d → 20d | 0% → 100% | 28, 27 → none | was named R04 Ready for Overall software design |
| 30 | 6.1 Fixed-level bot (Easy, Medium, Hard) | none → 2026-10-05 | none → 2026-10-16 | 5d → 10d | 0% → 100% | 1FS+30d, 5FF → none | was named A05 Check first build and update reports; constraint none → start no earlier than 2026-10-05; resources none → Nguyễn Gia Huy |
| 31 | 6.2 Adaptive behaviour-tree bot with Elo tiers | none → 2026-10-19 | none → 2026-10-30 | 0d → 10d | 0% → 100% | 30, 5, 29 → none | was named R05 Ready for Software Package 1; constraint none → start no earlier than 2026-10-19; resources none → Nguyễn Văn Thành Đạt |
| 32 | 6.3 Bot match setup, court and lighting options, rewards | none → 2026-10-05 | none → 2026-10-16 | 5d → 10d | 0% → 100% | 1FS+40d, 6FF → none | was named A06 Check second build and update reports; constraint none → start no earlier than 2026-10-05; resources none → Trần Nguyễn Hiếu Thuận |
| 33 | **7 FE-04 Online matches** | none → 2026-10-19 | none → 2026-11-27 | 0d → 30d | 0% → 85% | 32, 6, 31 → none | was named R06 Ready for Software Package 2 |
| 34 | 7.1 Photon Fusion session, lobby and room codes | none → 2026-10-19 | none → 2026-10-30 | 5d → 10d | 0% → 100% | 1FS+50d, 7FF → none | was named A07 Check third build and update reports; constraint none → start no earlier than 2026-10-19; resources none → Nguyễn Văn Thành Đạt |
| 35 | 7.2 Ranked matchmaking, ready check and bot fallback | none → 2026-11-02 | none → 2026-11-27 | 0d → 20d | 0% → 85% | 34, 7, 33 → none | was named R07 Ready for Software Package 3; constraint none → start no earlier than 2026-11-02; resources none → Nguyễn Văn Thành Đạt |
| 36 | 7.3 Dedicated server build, signed tickets, lease and result | none → 2026-11-02 | none → 2026-11-27 | 5d → 20d | 0% → 80% | 1FS+60d, 8FF → none | was named A08 Run final integration and system checks; constraint none → start no earlier than 2026-11-02; resources none → Nguyễn Văn Thành Đạt |
| 37 | 7.4 State synchronisation, input prediction and reconnection | none → 2026-11-02 | none → 2026-11-27 | 0d → 20d | 0% → 70% | 36, 8, 35 → none | was named R08 Ready for Full software package; constraint none → start no earlier than 2026-11-02; resources none → Nguyễn Văn Thành Đạt |
| 38 | 7.5 Elo rating and match result persistence | none → 2026-11-02 | none → 2026-11-13 | 5d → 10d | 0% → 100% | 1FS+65d, 9FF → none | was named A09 Prepare user and admin guides; constraint none → start no earlier than 2026-11-02; resources none → Nguyễn Văn Thành Đạt |
| 39 | **8 FE-05 AI coaching** | none → 2026-10-19 | none → 2026-11-13 | 0d → 20d | 0% → 100% | 38, 9, 37 → none | was named R09 Ready for Software user guides |
| 40 | 8.1 Telemetry capture, local spool and upload | none → 2026-11-02 | none → 2026-11-13 | 5d → 10d | 0% → 100% | 1FS+70d, 9FF → none | was named A10 Prepare final reports and defense; constraint none → start no earlier than 2026-11-02; resources none → Nguyễn Văn Thành Đạt |
| 41 | 8.2 FastAPI rule engine and gated tier model | none → 2026-10-19 | none → 2026-11-13 | 0d → 20d | 0% → 100% | 40, 9, 39 → none | was named R10 Ready for Final package and defense; constraint none → start no earlier than 2026-10-19; resources none → Nguyễn Văn Thành Đạt |

## Version 3 (data date 2026-11-11, saved 2026-11-11)

Note of the change: docs(reports): add R6/R7 generators and BM04 workflow owners to build scripts

Last finish stays 2026-12-20. Complete tasks 51 → 52.

Changed:

| ID | Task | Complete | Other |
| --- | --- | --- | --- |
| 1 | **1 Project management and documentation** | 81% → 89% |  |
| 6 | 1.5 Reports 5–7, user guides and defense slides | 35% → 80% | resources Trần Nguyễn Hiếu Thuận; Huỳnh Trung Kiên → Nguyễn Gia Huy; Trần Nguyễn Hiếu Thuận |
| 81 | M09 Report 6 – User Guides | 0% → 100% |  |

## Version 4 (data date 2026-11-11, saved 2026-11-13)

Note of the change: Merge branch 'main' of https://github.com/Tad-Min/PickleVerse

Last finish stays 2026-12-20. Complete tasks 52 → 53.

Changed:

| ID | Task | Finish | Duration | Complete |
| --- | --- | --- | --- | --- |
| 7 | **2 Foundation and architecture** | 2026-11-13 → 2026-11-27 (+14d) | 50d → 60d |  |
| 11 | 2.4 CI/CD pipeline (GitHub Actions, Docker Hub, SSH deployment) | 2026-11-13 → 2026-11-27 (+14d) | 10d → 20d |  |
| 18 | **4 FE-01 Account and onboarding** |  |  | 98% → 100% |
| 22 | 4.4 Profile, character and onboarding level | 2026-10-30 → 2026-11-13 (+14d) | 10d → 20d | 80% → 100% |
| 67 | **15 Testing and release** |  |  | 28% → 32% |
| 68 | 15.1 Unit tests (Unity EditMode, Python) and coverage |  |  | 50% → 60% |
| 71 | 15.4 Staging deployment and release package |  |  | 50% → 60% |

## Version 5 (data date 2026-11-11, saved 2026-11-21)

Note of the change: Merge pull request #5 from Tad-Min/main

Last finish stays 2026-12-20. Complete tasks 53 → 59.

Added:

| ID | Task | Duration | Start | Finish | Constraint | Resources |
| --- | --- | --- | --- | --- | --- | --- |
| 24 | 4.6 PC display modes, window frame and quit buttons (added 16/11/2026) | 10d | 2026-11-16 | 2026-11-27 | start no earlier than 2026-11-16 | Nguyễn Gia Huy |
| 40 | 7.6 Ranked doubles with bot fill and the dedicated-server pool (added 15–17/11/2026) | 20d | 2026-11-02 | 2026-11-27 | start no earlier than 2026-11-02 | Nguyễn Văn Thành Đạt |
| 53 | 10.4 Social feed, video posts, direct messages and whispers (Review 1, added 15/11/2026) | 20d | 2026-11-02 | 2026-11-27 | start no earlier than 2026-11-02 | Nguyễn Văn Thành Đạt |
| 54 | 10.5 Match detail with game scores and error statistics (added 15/11/2026) | 10d | 2026-11-02 | 2026-11-13 | start no earlier than 2026-11-02 | Nguyễn Văn Thành Đạt |
| 71 | 14.4 Golden-hour district around the courts and night lighting (added 15/11/2026) | 10d | 2026-11-02 | 2026-11-13 | start no earlier than 2026-11-02 | Nguyễn Gia Huy |

Changed:

| ID | Task | Finish | Duration | Complete | Other |
| --- | --- | --- | --- | --- | --- |
| 7 | **2 Foundation and architecture** |  |  | 100% → 98% |  |
| 9 | 2.2 Layered Web API, EF Core model and database schema (59 tables) |  |  |  | was named 2.2 Layered Web API, EF Core model and database schema (51 tables) |
| 11 | 2.4 CI/CD pipeline (GitHub Actions, Docker Hub, SSH deployment) |  |  | 100% → 90% |  |
| 18 | **4 FE-01 Account and onboarding** | 2026-11-13 → 2026-11-27 (+14d) | 20d → 30d |  |  |
| 25 | **5 FE-02 Tutorial and technique training** |  |  | 92% → 95% |  |
| 29 | 5.4 Offline training and one-time synchronisation |  |  | 70% → 80% |  |
| 34 | **7 FE-04 Online matches** |  |  | 85% → 100% |  |
| 36 | 7.2 Ranked matchmaking, ready check and bot fallback |  |  | 85% → 100% |  |
| 37 | 7.3 Dedicated server build, signed tickets, lease and result |  |  | 80% → 100% |  |
| 38 | 7.4 State synchronisation, input prediction and reconnection |  |  | 70% → 100% |  |
| 49 | **10 FE-07 Social, history and ranking** | 2026-10-30 → 2026-11-27 (+28d) | 20d → 40d | 100% → 93% |  |
| 72 | **15 Testing and release** |  |  | 32% → 37% |  |
| 74 | 15.2 Integration and system testing on staging |  |  | 30% → 50% |  |

## Version 6 (data date 2026-11-25, saved 2026-11-25)

Note of the change: docs(report): regenerated Reports 1-7, test workbooks, tracking and schedule [skip ci]

Last finish stays 2026-12-20. Complete tasks 59 → 64.

Added:

| ID | Task | Duration | Start | Finish | Constraint | Resources |
| --- | --- | --- | --- | --- | --- | --- |
| 25 | 4.7 One device per account, session check and seat takeover in a match (added 21/11/2026) | 10d | 2026-11-16 | 2026-11-27 | start no earlier than 2026-11-16 | Nguyễn Văn Thành Đạt |
| 42 | 7.7 Match-found intro, ready check screen and online match summary (added 19–25/11/2026) | 10d | 2026-11-16 | 2026-11-27 | start no earlier than 2026-11-16 | Nguyễn Gia Huy |
| 43 | 7.8 Host migration, position swap, replay upload during the match and outcome cinematic (added 22–24/11/2026) | 10d | 2026-11-16 | 2026-11-27 | start no earlier than 2026-11-16 | Nguyễn Văn Thành Đạt |
| 48 | 8.4 Analysis after a bot match, new coaching panel and referee calls (added 25/11/2026) | 10d | 2026-11-16 | 2026-11-27 | start no earlier than 2026-11-16 | Nguyễn Gia Huy |
| 69 | 12.7 Admin web redesign, lessons with several drills and replay launch in the game (added 20–22/11/2026) | 10d | 2026-11-16 | 2026-11-27 | start no earlier than 2026-11-16 | Huỳnh Trung Kiên |
| 77 | 14.5 Art direction: stylised shader, materials, courtside kit, lighting, atmosphere and geometry budget (added 24–25/11/2026) | 10d | 2026-11-16 | 2026-11-27 | start no earlier than 2026-11-16 | Nguyễn Gia Huy |
| 78 | 14.6 Gemstone and Dragon Ruby paddles with ball effects; six NCS music tracks (added 24–25/11/2026) | 10d | 2026-11-16 | 2026-11-27 | start no earlier than 2026-11-16 | Nguyễn Gia Huy |
| 84 | **16 FE-11 Membership (CR-01)** | 10d | 2026-11-16 | 2026-11-27 |  |  |
| 85 | 16.1 Membership orders, PayOS payment, mode locks and membership panel (added 22/11/2026) | 10d | 2026-11-16 | 2026-11-27 | start no earlier than 2026-11-16 | Nguyễn Văn Thành Đạt |

Changed:

| ID | Task | Finish | Duration | Complete | Other |
| --- | --- | --- | --- | --- | --- |
| 9 | 2.2 Layered Web API, EF Core model and database schema (60 tables) |  |  |  | was named 2.2 Layered Web API, EF Core model and database schema (59 tables) |
| 35 | **7 FE-04 Online matches** |  |  | 100% → 99% |  |
| 44 | **8 FE-05 AI coaching** | 2026-11-13 → 2026-11-27 (+14d) | 20d → 30d |  |  |
| 62 | **12 FE-09 Administration web application** | 2026-11-13 → 2026-11-27 (+14d) | 20d → 30d | 100% → 98% |  |
| 72 | **14 Art, audio and interface assets** | 2026-11-13 → 2026-11-27 (+14d) | 40d → 50d |  |  |
| 79 | **15 Testing and release** |  |  | 37% → 40% |  |
| 80 | 15.1 Unit tests (Unity EditMode, Python) and coverage |  |  | 60% → 70% |  |
